Task_ID,Phase,Week,Owner,Backup_Owner,Reviewer,Priority,Module,Source_Area,Title,Description,Start_Offset_Days,Finish_Offset_Days,Workload_Category,Base_Hours,Contingency_Hours,Total_Hours,Deliverable,Interface_Contract,Prerequisites,Integration_Prerequisite,Test_ID,Verification_Method,Acceptance_Criteria,Failure_Mode,Viva_Question_Topic,Expected_Answer,Follow_Up_Question,Evidence_Artifact,Status
LG-A-001,P0,W1,A,B,B,P0,Shared.Protocol,Networking,Chốt wire contract và protocol fixtures,"Đặc tả cấu trúc envelope JSON 6 trường (version, messageType, requestId, deviceId, sentAtUtc, payload) và 16 fixtures mẫu.",1,2,P0 Core,2.0,0.5,2.5,CONTRACT_MATRIX.md & protocol fixtures,"Outer envelope 6 fields, Big-Endian uint32 length prefix, UTF-8 JSON",None,None,TEST-A01,Schema validation tool và JSON parser kiểm tra fixture mẫu,"Tất cả wire catalog có fixture JSON hợp lệ, không sai lệch tên trường",Nếu lệch tên trường thì Central hoặc Admin không deserialize được; rollback về CONTRACT_MATRIX freeze,Framing nhị phân và ranh giới thông điệp TCP,TCP là stream-oriented không bảo toàn ranh giới; cần 4 byte length-prefix để bên nhận biết chính xác kích thước frame,Tại sao dùng Big-Endian mà không dùng Little-Endian mặc định của x86?,"CONTRACT_MATRIX.md, fixture JSON files",TODO vì đây là checkpoint thiết kế; việc triển khai MVP bắt đầu theo kế hoạch sau khi contract được freeze.
LG-A-002,P0,W1,A,B,B,P0,Shared.Protocol,Networking,FrameCodec và xử lý partial reads / message framing,"Hiện thực FrameCodec với ReadExactlyBytesAsync xử lý partial read, ghép frame, kiểm tra MaxFrameSize 256 KiB và ném EndOfStreamException khi EOF.",2,3,P0 Core,3.5,0.5,4.0,FrameCodec.cs & Unit tests,"FrameCodec.ReadExactlyBytesAsync, MaxFrameSize = 262144 bytes",LG-A-001,None,TEST-A02,"Unit test đọc 1-byte chunking, 3 frame liền mạch và frame vượt 256 KiB",Pass 5/5 kịch bản unit test; không nuốt ngoại lệ stream; không cấp phát buffer khi frame size quá lớn,Đọc thiếu byte dẫn đến parse JSON hỏng; ném EndOfStreamException và đóng kết nối an toàn,Hiện tượng Partial Read và cách xử lý trong socket TCP,Stream.ReadAsync có thể trả về ít byte hơn yêu cầu; phải lặp vòng lặp tích lũy byte cho đến khi đủ count,Tại sao không dùng ReadAsync trả về 0 để tiếp tục đợi dữ liệu?,"scratch/test_frame_codec/Program.cs, test_frame_codec_run.log",TODO vì đây là checkpoint thiết kế; việc triển khai MVP bắt đầu theo kế hoạch sau khi contract được freeze.
LG-A-003,P0,W1,A,B,B,P0,Agent.Core,Networking,Agent TCP connection và writer queue,Khởi tạo kết nối TCP client tới Central Server; quản lý hàng đợi gửi tuần tự bằng Channel Bounded để đảm bảo Single Writer trên Socket.,3,4,P0 Core,2.5,0.5,3.0,AgentClient.cs & WriterLoop,"TcpClient, NetworkStream, Channel<byte[]> Bounded(100)",LG-A-002,None,TEST-A03,Chạy song song 10 thread ghi vào writer channel tới Mini Test Server,"Dữ liệu trên socket được ghi tuần tự, không bị đan xen byte giữa các frame",Nhiều luồng ghi đồng thời vào NetworkStream làm hỏng framing; Channel bảo đảm đúng 1 luồng ghi duy nhất,Single Writer pattern trên TCP socket đa luồng,NetworkStream không an toàn đa luồng cho các thao tác ghi đồng thời; Channel làm hàng đợi trung chuyển đảm bảo 1 consumer ghi tuần tự,Nếu hàng đợi channel bị đầy thì xử lý thế nào để không crash ứng dụng?,"Trace log socket client, Mini Test Server output",TODO vì đây là checkpoint thiết kế; việc triển khai MVP bắt đầu theo kế hoạch sau khi contract được freeze.
LG-A-004,P0,W1,A,B,B,P0,Agent.Security,Security,TLS client và local identity enrollment,Thiết lập kết nối an toàn TLS 1.3 qua SslStream; xác thực chứng chỉ Central Server và lưu trữ DeviceId/enrollment token cục bộ an toàn.,4,5,P0 Core,2.0,0.5,2.5,TlsClientHandler.cs & IdentityStore,"SslStream, RemoteCertificateValidationCallback, Local DeviceId store",LG-A-003,LG-B-003,TEST-A04,Kết nối TLS tới server có cert tự ký; thử nghiệm cert giả mạo để kiểm tra từ chối,Bắt tay TLS thành công với cert hợp lệ; ngắt kết nối ngay khi cert không khớp thumbprint,MITM attack; từ chối kết nối nếu chứng chỉ không xác minh được tính toàn vẹn,Bảo mật kênh truyền với SslStream trong .NET,"SslStream bọc ngoài NetworkStream, mã hóa payload và bắt tay bảo mật; callback kiểm tra thumbprint ngăn chặn tấn công giả mạo",Tại sao không bỏ qua kiểm tra chứng chỉ bằng return true trong môi trường thật?,"Wireshark packet dump mã hóa TLS, client error log",TODO vì đây là checkpoint thiết kế; việc triển khai MVP bắt đầu theo kế hoạch sau khi contract được freeze.
LG-A-005,P0,W1,A,C,C,P0,Agent.Metrics,System,"Thu thập CPU, RAM, NIC, Uptime hệ thống",Thu thập định kỳ chỉ số tài nguyên Windows bằng PerformanceCounter hoặc System.Diagnostics; không gây nghẽn luồng thu thập.,4,5,P0 Core,2.5,0.5,3.0,WindowsMetricsCollector.cs,"IMetricsCollector: ReadCpuPercent(), ReadMemoryBytes(), ReadNicBytes()",LG-A-001,None,TEST-A05,Chạy trên Windows 11 thật và máy ảo tải giả lập; đối chiếu số liệu với Task Manager,"Chỉ số CPU/RAM đo liên tục mỗi 5s sai lệch <= 5% so với Task Manager, thời gian thu thập < 100ms",Lỗi truy cập counter hiệu năng; fallback sang WMI hoặc trả giá trị an toàn kèm cờ lỗi,Kỹ thuật thu thập chỉ số hiệu năng hệ điều hành Windows,Dùng PerformanceCounter lấy mẫu delta giữa 2 thời điểm; cần chạy trong background thread để tránh giật giao diện,Tại sao lần đọc đầu tiên của CPU PerformanceCounter luôn trả về 0?,Raw metrics CSV log so sánh với Task Manager,TODO vì đây là checkpoint thiết kế; việc triển khai MVP bắt đầu theo kế hoạch sau khi contract được freeze.
LG-A-006,P0,W1,A,B,B,P0,Agent.Transport,Networking,Heartbeat và batch sender,Lập lịch gửi định kỳ HEARTBEAT mỗi 5s và gom mẻ METRIC_BATCH gửi lên Central; quản lý trạng thái chờ ACK phản hồi.,5,6,P0 Core,2.5,0.5,3.0,BatchScheduler.cs & SenderQueue,"HEARTBEAT chu kỳ 5s, METRIC_BATCH (batchId, bootId, metrics)","LG-A-003, LG-A-005",LG-B-005,TEST-A06,Gửi liên tục 100 batch tới Mini Server; đo đạc độ trễ nhận ACK,Heartbeat gửi đúng chu kỳ 5s ± 200ms; nhận BATCH_ACK và xóa mẻ khỏi queue bộ nhớ,Không nhận được ACK sau timeout 5s; mẻ tin được giữ lại hàng đợi replay để retry,Cơ chế phân tách luồng Heartbeat và Telemetry Batch,Heartbeat là bản tin nhỏ ưu tiên cao để duy trì liveness; telemetry batch là dữ liệu lớn gom mẻ để giảm tải socket,Nếu gom mẻ quá lâu thì có ảnh hưởng gì tới tính thời gian thực của cảnh báo?,"Trace log trao đổi bản tin, time delta log",TODO vì đây là checkpoint thiết kế; việc triển khai MVP bắt đầu theo kế hoạch sau khi contract được freeze.
LG-A-007,P0,W2,A,C,C,P0,Agent.Service,Networking,Local TCP service probe theo allowlist,"Thăm dò cổng TCP nội bộ theo danh sách cấu hình (tối đa 5 cổng: HTTP 80, SQL 1433, App 8080...); timeout 2s mỗi cổng.",8,9,P0 Core,2.0,0.5,2.5,ServiceProbeWorker.cs,"SERVICE_STATUS (probes: [{port, serviceName, isUp, responseMs}])",LG-A-006,None,TEST-A07,Mô phỏng mở và đóng port 80/8080 cục bộ; ghi nhận trạng thái probe,Phát hiện port mở trả isUp=true < 50ms; port đóng/bị lọc trả isUp=false sau đúng timeout 2s,Socket connect bị treo vô hạn; sử dụng CancellationTokenSource với timeout 2000ms để hủy kết nối,Thăm dò cổng TCP và xử lý timeout bất đồng bộ,"Dùng TcpClient.ConnectAsync kèm CancellationToken hoặc Task.WhenAny với Task.Delay để ép timeout 2s, tránh nghẽn thread",Sự khác biệt giữa cổng đóng (RST) và cổng bị tường lửa drop (Timeout)?,"Service probe status log, timing benchmark",TODO vì đây là checkpoint thiết kế; việc triển khai MVP bắt đầu theo kế hoạch sau khi contract được freeze.
LG-A-008,P0,W2,A,B,B,P0,Agent.Simulator,Testing,Agent Simulator 10/20/50 socket độc lập,"Ứng dụng console giả lập nhiều Agent kết nối đồng thời từ một máy tính, mô phỏng tải telemetry và heartbeat đa thiết bị.",9,11,Test/Harness,4.0,0.5,4.5,LabGuard.Simulator.exe,"Giả lập N Agent clients, mỗi client có DeviceId, BootId, IP và metrics profile riêng",LG-A-006,LG-B-003,TEST-A08,Chạy 20 simulated agent kết nối tới Central Server liên tục 30 phút,20 socket duy trì kết nối độc lập; gửi heartbeat 5s và metric 10s không bị đan xen hay deadlock,Tràn socket hoặc cạn kiệt port ephemeral; tái sử dụng kết nối và quản lý vòng đời socket cẩn thận,Mô hình giả lập tải mạng nhiều node trên môi trường thử nghiệm,Mỗi simulated node là một state machine độc lập chạy trên Task riêng; mô phỏng đúng hành vi delay và jitter thực tế,Giả lập nhiều socket trên 1 máy khác gì so với nhiều máy thật trong mạng LAN?,"Simulator process monitor, Central connection count screenshot",TODO vì đây là checkpoint thiết kế; việc triển khai MVP bắt đầu theo kế hoạch sau khi contract được freeze.
LG-A-009,P0,W2,A,B,B,P0,Agent.Transport,Networking,Reconnect backoff và metric replay retry,Cơ chế tự động kết nối lại khi mất mạng với Exponential Backoff + Jitter; hàng đợi replay bộ nhớ đệm và gắn cờ isReplay=true trong payload.,11,12,P0 Core,2.5,0.5,3.0,ReplayQueue.cs & BackoffPolicy.cs,"Backoff: 1s, 2s, 4s, 8s, max 30s + jitter 10%; payload.isReplay = true",LG-A-006,LG-B-005,TEST-A09,Ngắt mạng 30s rồi khôi phục; kiểm tra số mẻ replay được gửi lên Central,Tự động kết nối lại theo backoff; replay các mẻ telemetry chưa ACK với isReplay=true; không replay heartbeat,Reconnect storm khi server restart; Jitter phân tán thời điểm kết nối giúp giảm xung đột,Thuật toán Exponential Backoff kèm Jitter và hàng đợi Replay,Nhân đôi thời gian chờ sau mỗi lần thử kèm độ lệch ngẫu nhiên để tránh hiện tượng mọi client đồng loạt kết nối lại cùng lúc,Tại sao không được replay bản tin Heartbeat khi kết nối lại?,"Replay queue dump log, reconnect timeline capture",TODO vì đây là checkpoint thiết kế; việc triển khai MVP bắt đầu theo kế hoạch sau khi contract được freeze.
LG-A-010,P0,W2,A,C,C,P0,Agent.Testing,Testing,Failure injection và counters,"Bộ công cụ chèn lỗi nhân tạo: ngắt kết nối đột ngột (RST/FIN), trễ mạng (latency injection) và đếm số gói gửi/nhận/lỗi.",12,13,Test/Harness,3.0,0.5,3.5,NetworkFailureInjector.cs & DiagnosticsCounters,"IFailureInjector: InjectDrop(rate), InjectDelay(ms), InjectDisconnect()",LG-A-009,None,TEST-A10,Inject ngắt kết nối giữa chừng lúc đang gửi frame lớn; theo dõi phản ứng của Agent,"Agent phát hiện lỗi socket, kích hoạt backoff kết nối lại, đếm đúng số sự kiện ngắt và không crash tiến trình",Ngoại lệ SocketException không được bắt; bọc try-catch toàn diện tại tầng I/O và ghi nhận counter,Kiểm thử khả năng phục hồi lỗi mạng (Chaos / Resilience Testing),Chủ động tạo lỗi giả định giúp xác minh mã nguồn tự khôi phục đúng thiết kế trước khi đưa vào môi trường thật,Làm thế nào để phân biệt mất kết nối do cáp mạng rút hay do server chủ động đóng?,"Failure injection log, counter report",TODO vì đây là checkpoint thiết kế; việc triển khai MVP bắt đầu theo kế hoạch sau khi contract được freeze.
LG-A-011,P0,W3,A,B,B,P0,Agent.Diagnostics,System,Log xoay vòng và evidence hỗ trợ debug,"Bộ ghi log ứng dụng dạng JSON xoay vòng theo dung lượng tối đa 10MB/file, giữ tối đa 5 file gần nhất để bảo vệ ổ đĩa.",15,16,P0 Core,1.5,0.5,2.0,RollingLogger.cs,"MaxFileSize = 10MB, MaxFiles = 5, Async file append",LG-A-006,None,TEST-A11,Bơm liên tục 50MB log kiểm tra xoay vòng file,Tổng dung lượng thư mục log luôn <= 50MB; file cũ tự xóa khi vượt quá 5 file,Nghẽn I/O đĩa làm chậm luồng mạng; ghi log bất đồng bộ qua hàng đợi riêng biệt,Chiến lược lưu log xoay vòng trong ứng dụng giám sát,Giới hạn dung lượng và số file để tránh làm cạn kiệt ổ cứng máy trạm trong các đợt phát sinh lỗi liên tục,Tại sao định dạng JSON log lại thuận tiện cho phân tích tự động?,Thư mục log mẫu chứa các file xoay vòng,TODO vì đây là checkpoint thiết kế; việc triển khai MVP bắt đầu theo kế hoạch sau khi contract được freeze.
LG-A-012,P0,W3,A,B,B,P0,Agent.Integration,Integration,MVP Agent end-to-end trên hai máy thật LAN,Cài đặt Agent trên 2 máy tính vật lý trong mạng LAN phòng máy UIT; kết nối tới Central Server trên máy của sinh viên B.,16,18,Tích hợp,3.5,0.5,4.0,Script cài đặt & Báo cáo đo kiểm LAN,TCP/TLS qua địa chỉ IP LAN thật (192.168.x.x),"LG-A-006, LG-A-007","LG-B-005, LG-C-007",TEST-A12,Chạy đồng thời 2 Agent máy thật liên tục 1 giờ trong giờ thực hành,Cả 2 máy hiển thị trạng thái Online trên Dashboard của sinh viên C; dữ liệu metric cập nhật đều đặn,Windows Defender Firewall chặn port; thêm rule cho phép inbound/outbound TCP port tương ứng,Thực tế kiểm thử mạng LAN phòng máy so với chạy localhost,"Localhost bỏ qua tường lửa, trễ mạng và phân mảnh gói tin thực tế; test LAN kiểm chứng đúng giao thức mạng",Làm thế nào xác định địa chỉ IP máy server khi phòng máy dùng DHCP cấp động?,"Ảnh chụp màn hình 2 máy thật gửi tin, log kết nối LAN",TODO vì đây là checkpoint thiết kế; việc triển khai MVP bắt đầu theo kế hoạch sau khi contract được freeze.
LG-A-013,P1,W4,A,C,C,P1,P1.Gateway,Networking,Gateway least-connections admission,Bộ cân bằng tải L4 chuyển tiếp kết nối TCP tới Collector có số kết nối active ít nhất; quản lý bảng trạng thái kết nối.,22,24,P1 Extension,6.0,0.5,6.5,LabGuard.Gateway.exe & LoadBalancerCore.cs,"TCP proxy L4, thuật toán Least-Connections trên danh sách backend Collector","M4 Gate GO, LG-A-012",LG-C-013,TEST-A13,Mở lần lượt 10 kết nối mới qua Gateway; kiểm tra số kết nối phân bổ về 2 Collector,Phân bổ đều 5-5 giữa 2 Collector; chuyển kết nối mới về node ít tải hơn khi có sự chênh lệch,Collector bị đầy kết nối; từ chối kết nối hoặc giữ trong hàng đợi chờ với timeout quy định,Thuật toán cân bằng tải Least-Connections tầng giao vận (L4),Theo dõi số lượng kết nối đang hoạt động trên từng backend để định tuyến kết nối mới vào node rảnh nhất,Tại sao L4 proxy không cần parse nội dung JSON bên trong packet?,"Gateway connection metrics log, bảng phân bổ tải",TODO vì đây là checkpoint thiết kế; việc triển khai MVP bắt đầu theo kế hoạch sau khi contract được freeze.
LG-A-014,P1,W4,A,B,B,P1,P1.Gateway,Networking,Gateway duplex relay và health polling,Chuyển tiếp dòng byte 2 chiều (duplex byte copy) giữa Agent socket và Collector socket; định kỳ thăm dò health check Collector.,24,26,P1 Extension,6.0,0.5,6.5,DuplexRelay.cs & HealthPoller.cs,"Stream.CopyToAsync hai chiều, HealthProbeInterval [CP2 TO VERIFY] (đề xuất 5s / 3 fail / 2 recovery [CP2 TO VERIFY])",LG-A-013,LG-C-015,TEST-A14,Tắt đột ngột 1 Collector; đo thời gian Gateway phát hiện và dừng chuyển tiếp,Phát hiện Collector chết sau HealthFailThreshold [CP2 TO VERIFY] (đề xuất 3 lần probe lỗi liên tiếp [CP2 TO VERIFY]); đóng socket kết nối phía Agent để kích hoạt reconnect,Half-open socket gây rò rỉ file descriptor; đóng đồng thời cả 2 đầu socket khi 1 bên ngắt kết nối,Chuyển tiếp byte hai chiều bất đồng bộ và xử lý half-closed socket,"Dùng 2 Task CopyToAsync đồng thời; khi 1 Task hoàn thành (do ngắt kết nối), lập tức hủy Task còn lại và đóng socket",Tại sao probe health check cần ngưỡng 3 fail và 2 recovery thay vì 1 lần?,"Duplex relay throughput log, health probe timeline",TODO vì đây là checkpoint thiết kế; việc triển khai MVP bắt đầu theo kế hoạch sau khi contract được freeze.
LG-A-015,P1,W5,A,C,C,P1,P1.Testing,Testing,LB integration và collector kill failover proof,Tích hợp toàn diện mô hình P1; thực hiện bài test kill tiến trình Collector đang tải và chứng minh hệ thống tự khôi phục.,29,30,P1 Extension,3.0,0.5,3.5,Báo cáo failover & Raw metrics capture,Gateway + 2 Collector instances + Central Server,LG-A-014,"LG-C-015, LG-B-015",TEST-A15,Kill tiến trình Collector 01 khi có 20 agent đang kết nối; đo thời gian tái kết nối p95,Thời gian tái kết nối p95 <= 45s; Agent chuyển sang Collector 02; không thất thoát dữ liệu do có replay queue,"Mất dữ liệu in-flight; Agent replay lại mẻ tin chưa có ACK, Central khử trùng lặp qua ProcessedBatches",Hiện tượng Failover trong hệ thống phân tán và bảo toàn dữ liệu,Hệ thống chấp nhận gián đoạn tạm thời nhưng bảo toàn dữ liệu nhờ kết hợp hàng đợi replay phía client và dedup phía server,Tại sao không cần zero-downtime cho đồ án quy mô phòng máy?,"Failover latency histogram, video quay lại quá trình kill tiến trình",TODO vì đây là checkpoint thiết kế; việc triển khai MVP bắt đầu theo kế hoạch sau khi contract được freeze.
LG-A-016,P0,W5,A,B,B,P0/Release,Release.Deploy,System,Internet deployment chuẩn và fallback,Cấu hình triển khai kết nối qua môi trường mạng diện rộng bằng Port Forwarding hoặc Cloudflare/ngrok Tunnel; tài liệu hóa topology.,29,30,P0 Core,1.5,0.5,2.0,Topology.md & Runbook triển khai Internet,TLS connection qua Public Domain / DNS / DDNS / Tunnel,LG-A-012,LG-B-003,TEST-A16,Kết nối Agent từ mạng 4G điện thoại vào Central Server đặt tại mạng nhà/trường,Bắt tay TLS thành công qua Internet; heartbeat duy trì ổn định không rớt gói bất thường,CGNAT nhà mạng chặn Port Forwarding; fallback sang giải pháp Tunnel bảo mật,Kỹ thuật định tuyến kết nối từ Internet qua NAT và Firewall,Trình bày sự khác biệt giữa Port Forwarding router thông thường và Tunnel bảo mật khi gặp hạ tầng CGNAT,Nguy cơ bảo mật khi mở port máy chủ ra môi trường Internet công cộng?,"Tracert log, sơ đồ topology mạng, ảnh chụp kết nối 4G",TODO vì đây là checkpoint thiết kế; việc triển khai MVP bắt đầu theo kế hoạch sau khi contract được freeze.
LG-A-017,P0,W5,A,B,B,P0/Release,Release.Testing,Testing,Load test và reconnect storm,Kiểm thử áp lực cao với 50 simulated agent kết nối đồng thời và kịch bản khởi động lại Central gây ra bão kết nối (reconnect storm).,30,31,Test/Harness,3.0,0.5,3.5,LoadStormReport.md & System counters,"50 concurrent TCP sockets, heartbeat 5s, telemetry 10s",LG-A-008,LG-B-010,TEST-A17,Khởi động lại Central trong khi 50 agent đang chạy; quan sát biểu đồ CPU và RAM,Toàn bộ 50 agent kết nối lại thành công trong vòng 60s; server không bị tràn bộ nhớ hay treo CPU,Bão kết nối làm cạn ThreadPool; ThreadPool tự điều hòa nhờ cấu trúc Bounded Queue và async I/O,Hiện tượng Reconnect Storm và cách phòng ngừa,Khi hàng loạt client mất kết nối và cùng thử lại đồng thời sẽ gây quá tải máy chủ; giải pháp là Exponential Backoff kèm Jitter ngẫu nhiên,Jitter ngẫu nhiên giúp phân bổ đồ thị tải như thế nào?,"Biểu đồ tải CPU/RAM server, reconnect storm log",TODO vì đây là checkpoint thiết kế; việc triển khai MVP bắt đầu theo kế hoạch sau khi contract được freeze.
LG-A-018,P0,W5,A,C,C,P0/Release,Release.Evidence,Integration,Thu proof LAN Internet cho release candidate,"Thu thập và đối soát toàn bộ bằng chứng thực nghiệm: video quay màn hình, packet capture Wireshark, file cấu hình và log thực địa.",31,32,Tích hợp,2.5,0.5,3.0,Bộ minh chứng thực nghiệm & Capture file (.pcapng),Toàn bộ hệ thống LABGUARD chạy thực tế,"LG-A-012, LG-A-016",None,TEST-A18,Đối soát chéo dữ liệu packet capture với log hệ thống của Central Server,"Bằng chứng rõ ràng, thể hiện đúng mốc thời gian, IP thật, gói tin TLS mã hóa và kịch bản chuyển đổi trạng thái",File pcap thiếu thông tin; bắt gói tin trực tiếp trên card mạng vật lý có lọc IP rõ ràng,Phương pháp thu thập và phân tích gói tin mạng bằng Wireshark,"Đặt bộ lọc capture filter và display filter phù hợp để ghi lại quá trình bắt tay 3 bước TCP, TLS handshake và frame dữ liệu",Làm thế nào chứng minh dữ liệu telemetry đã thực sự được mã hóa trên đường truyền?,"File .pcapng, ảnh chụp màn hình Wireshark follow stream",TODO vì đây là checkpoint thiết kế; việc triển khai MVP bắt đầu theo kế hoạch sau khi contract được freeze.
LG-A-019,P0,W5,A,B,B,P0/Release,Release.Packaging,System,Release scripts và package checksum,"Biên soạn PowerShell script tự động build cấu hình Release, thu thập artifact thực thi và tạo bảng mã băm SHA-256.",32,33,P0 Core,1.5,0.0,1.5,PackageRelease.ps1 & SHA256SUMS.txt,".NET SDK CLI publish -c Release, SHA-256 hash algorithm",LG-A-018,"LG-B-019, LG-C-019",TEST-A19,Chạy script trên máy tính môi trường sạch; giải nén và đối chiếu checksum,Tạo gói ZIP hoàn chỉnh chạy được ngay; 100% file có mã băm SHA-256 khớp tuyệt đối,Thiếu runtime dependency; xuất bản ở chế độ self-contained hoặc quy định rõ .NET Runtime yêu cầu,Quy trình đóng gói phần mềm và kiểm tra tính toàn vẹn (Integrity Check),Dùng mã băm mật mã học SHA-256 để đảm bảo gói cài đặt không bị hỏng hóc hoặc can thiệp trên đường truyền,Sự khác biệt giữa mã băm toàn vẹn (Checksum) và chữ ký số (Digital Signature)?,"PackageRelease.ps1, MANIFEST_SHA256.txt",TODO vì đây là checkpoint thiết kế; việc triển khai MVP bắt đầu theo kế hoạch sau khi contract được freeze.
LG-A-020,P0,W5,A,B,B,P0/Viva,Viva,Viva,Viva A và bàn giao backup,"Diễn tập trả lời 30 câu hỏi vấn đáp chuyên sâu về Socket TCP, Framing, TLS, Simulator và cân bằng tải Gateway; chuẩn bị tài liệu dự phòng.",33,35,Viva,5.0,0.0,5.0,HANDBOOK_A.md & Viva rehearsal log,"30 câu hỏi viva chuyên sâu phần Agent, Networking & Gateway",LG-A-019,None,TEST-A20,Vấn đáp chéo giả định với thành viên B và C chấm điểm độc lập,"Giải thích lưu loát các cơ chế mạng, vẽ được sơ đồ luồng dữ liệu và chỉ ra đúng dòng code trong repo",Lúng túng khi bị hỏi sâu về socket; ôn tập kỹ bảng thuật ngữ và các kịch bản kiểm thử trong handbook,Tổng quan kiến trúc phân tầng mạng và ranh giới trách nhiệm của Lane A,"Trình bày mạch lạc vai trò của Agent thu thập dữ liệu, cơ chế framing, đảm bảo an toàn kết nối và phân tải P1",Điểm tâm đắc nhất và bài học lớn nhất rút ra từ đồ án môn học?,"HANDBOOK_A.md, biên bản diễn tập vấn đáp nội bộ",TODO vì đây là checkpoint thiết kế; việc triển khai MVP bắt đầu theo kế hoạch sau khi contract được freeze.
LG-B-001,P0,W1,B,C,C,P0,Central.Database,Storage,Schema migrations và seed an toàn,"Tạo cấu trúc 8 bảng CSDL SQL Server 2022 Express với PK, FK, index; sử dụng kiểu dữ liệu rowversion đặc thù và seed dữ liệu khởi tạo.",1,3,P0 Core,2.5,0.5,3.0,V1__Initial_Schema.sql & Seed.sql,"SQL Server 2022 schema, 8 tables, rowversion column for OCC",LG-A-001,None,TEST-B01,Chạy script migration trên instance SQL Server sạch,Tạo đầy đủ 8 bảng không lỗi; ràng buộc khóa ngoại và chỉ mục toàn vẹn,Lỗi xung đột kiểu dữ liệu hoặc cú pháp; dùng migration script có version kiểm soát,Kiểu dữ liệu rowversion trong SQL Server và cơ chế OCC,rowversion là kiểu dữ liệu đặc thù của SQL Server tự động tăng khi dòng thay đổi; client coi là token mờ 8-byte kiểm tra tranh chấp,Tại sao không dùng cột timestamp datetime để kiểm tra tranh chấp dữ liệu?,"Script SQL migration, sơ đồ quan hệ thực thể ERD",TODO vì đây là checkpoint thiết kế; việc triển khai MVP bắt đầu theo kế hoạch sau khi contract được freeze.
LG-B-002,P0,W1,B,C,C,P0,Central.Database,Storage,SQL repositories và transaction boundary,Xây dựng lớp truy xuất dữ liệu Repository với Dapper/ADO.NET; quản lý ranh giới giao dịch Transaction an toàn cho nghiệp vụ sự cố.,3,4,P0 Core,2.5,0.5,3.0,IncidentRepository.cs & MetricRepository.cs,"IDbTransaction, atomic incident creation with audit history",LG-B-001,None,TEST-B02,Unit test cố tình throw exception giữa giao dịch; kiểm tra rollback CSDL,"Giao dịch rollback hoàn toàn, không để lại dữ liệu rác (orphan records)",Deadlock cơ sở dữ liệu; sắp xếp thứ tự cập nhật bảng nhất quán và dùng command timeout phù hợp,Tính nguyên tử (Atomicity) và ranh giới giao dịch trong CSDL,"Mọi thao tác ghi liên quan (mở sự cố, ghi lịch sử, cập nhật thiết bị) phải nằm trong 1 Transaction để đảm bảo tính nhất quán",Sự khác biệt giữa giao dịch ở tầng CSDL và khóa trong bộ nhớ RAM?,Test log kiểm chứng rollback thành công,TODO vì đây là checkpoint thiết kế; việc triển khai MVP bắt đầu theo kế hoạch sau khi contract được freeze.
LG-B-003,P0,W1,B,A,A,P0,Central.Server,Networking,Central accept TLS và bounded ingress,Lắng nghe kết nối TCP socket bất đồng bộ qua TcpListener; bắt tay TLS 1.3 qua SslStream và chuyển bản tin vào Ingress Channel có chặn.,4,5,P0 Core,3.0,0.5,3.5,CentralServerDaemon.cs & IngressChannel.cs,"TcpListener, SslStream (Server cert), BoundedChannelOptions(1000)",LG-A-002,LG-A-003,TEST-B03,Bơm đồng thời 50 kết nối TLS thử nghiệm kiểm tra phân bổ luồng ThreadPool,Chấp nhận kết nối bất đồng bộ không tạo 1 thread riêng cho mỗi socket; kênh ingress kích hoạt backpressure khi đầy,Tràn bộ nhớ do quá nhiều kết nối; giới hạn số kết nối tối đa và áp dụng Bounded Channel,Mô hình I/O bất đồng bộ (Non-blocking I/O) trên máy chủ mạng,"Dùng async/await tận dụng I/O Completion Ports của hệ điều hành, giải phóng thread về pool khi chờ dữ liệu socket",Tại sao không nên tạo mới một Thread cho mỗi kết nối client?,"Server socket listen log, ThreadPool performance counters",TODO vì đây là checkpoint thiết kế; việc triển khai MVP bắt đầu theo kế hoạch sau khi contract được freeze.
LG-B-004,P0,W1,B,C,C,P0,Central.Auth,Security,"Session registry, server auth PBKDF2 và RBAC","Xác thực người dùng bằng PBKDF2-HMAC-SHA256 600,000 vòng với salt 16 bytes; quản lý token phiên trong RAM và kiểm tra quyền server-side.",5,6,P0 Core,3.0,0.5,3.5,AuthService.cs & SessionStore.cs,"PBKDF2-HMAC-SHA256 (600k iter, 16B salt, 32B key, FixedTimeEquals), RBAC: Admin, Operator, Viewer","LG-B-001, LG-B-003",LG-C-003,TEST-B04,Kiểm tra đăng nhập đúng/sai pass; thử nghiệm bypass quyền từ client gửi trực tiếp command,Mật khẩu băm an toàn kèm salt; server chặn đứng mọi lệnh không đủ quyền dù client có cố tình gửi,Timing attack khi so sánh chuỗi hash; sử dụng CryptographicOperations.FixedTimeEquals,Thuật toán băm mật khẩu PBKDF2 và kiểm soát quyền bắt buộc phía server,PBKDF2 làm chậm quá trình dò vét brute-force; kiểm tra quyền phía server là chốt chặn an ninh bắt buộc vì UI client có thể bị can thiệp,Tại sao việc ẩn nút bấm trên WinForms không được xem là giải pháp an ninh?,"Bảng dữ liệu Users đã băm mật khẩu, auth security audit log",TODO vì đây là checkpoint thiết kế; việc triển khai MVP bắt đầu theo kế hoạch sau khi contract được freeze.
LG-B-005,P0,W2,B,A,A,P0,Central.Ingest,Storage,"Metric ingestion, dedup ProcessedBatches, commit ACK","Lưu mẻ dữ liệu vào DB; khử trùng lặp bền vững qua bảng ProcessedBatches (DeviceId+BootId+BatchId, TTL 24h); gửi BATCH_ACK sau commit.",8,10,P0 Core,2.5,0.5,3.0,BatchIngestProcessor.cs,"Table ProcessedBatches (DeviceId, BootId, BatchId, ReceivedUtc), BATCH_ACK","LG-B-002, LG-B-003",LG-A-006,TEST-B05,Gửi 10 mẻ tin trùng lặp liên tiếp; kiểm tra số dòng ghi vào bảng telemetry,Chỉ ghi vào bảng telemetry 1 lần duy nhất; luôn gửi lại BATCH_ACK xác nhận cho client,Client gửi lặp gây sai lệch thống kê; khóa chính bảng ProcessedBatches ngăn chặn triệt để,Cơ chế khử trùng lặp bền vững (Deduplication) và Idempotency,"Dùng bảng cơ sở dữ liệu có khóa chính tự nhiên để chặn trùng lặp qua các đợt restart, không phụ thuộc vào bộ nhớ RAM tạm",Tại sao khi phát hiện batch trùng vẫn phải gửi lại BATCH_ACK?,"Bảng ProcessedBatches SQL Server, log xử lý mẻ tin",TODO vì đây là checkpoint thiết kế; việc triển khai MVP bắt đầu theo kế hoạch sau khi contract được freeze.
LG-B-006,P0,W2,B,A,A,P0,Central.Rule,Networking,Liveness registry và monotonic deadline evaluator,"Đánh giá nhịp tim Agent bằng đồng hồ đơn điệu Stopwatch phía máy chủ, độc lập hoàn toàn với clock của client; kích hoạt DEVICE_OFFLINE sau 20s.",10,11,P0 Core,2.5,0.5,3.0,LivenessRegistry.cs,Liveness threshold: Missed 3 intervals (15s) + 5s grace = 20s offline deadline,LG-B-003,LG-A-006,TEST-B06,Ngắt heartbeat của một Agent thử nghiệm; đo thời gian server công bố offline,Chuyển trạng thái máy sang Offline sau đúng 20s ± 500ms; phát sự kiện DEVICE_UPDATE tới Admin,Đồng hồ máy trạm bị sai lệch giờ; server chỉ căn cứ vào thời điểm nhận trên đồng hồ Stopwatch nội bộ,Đánh giá trạng thái hoạt động (Liveness) bằng đồng hồ đơn điệu máy chủ,Không tin tưởng mốc thời gian của client gửi lên; dùng thời gian thực trôi qua trên server để tránh lỗi lệch giờ (Clock Drift),Tại sao cần khoảng thời gian ân hạn (Grace Period) 5 giây?,"Liveness deadline event log, timeline đối chiếu",TODO vì đây là checkpoint thiết kế; việc triển khai MVP bắt đầu theo kế hoạch sau khi contract được freeze.
LG-B-007,P0,W2,B,C,C,P0,Central.Rule,RuleEngine,Rule evaluator: hysteresis và counters,"Đánh giá ngưỡng cảnh báo với thuật toán chống dao động (Hysteresis): HIGH_CPU kích hoạt khi >= 90% liên tiếp 3 mẫu (10s), phục hồi khi <= 75% liên tiếp 3 mẫu.",11,12,P0 Core,2.5,0.5,3.0,RuleEvaluator.cs,"Trigger: CPU >= 90% (streak 3), Recovery: CPU <= 75% (streak 3); SERVICE_DOWN 2 fail / 2 success",LG-B-005,None,TEST-B07,"Bơm chuỗi telemetry biến thiên qua test harness (89%, 91%, 92%, 90%, 80%, 74%, 73%, 72%)",Bật sự cố sau đúng 3 mẫu vượt ngưỡng; không tắt cảnh báo ở mức 80%; chỉ phục hồi sau đủ 3 mẫu <= 75%,Cảnh báo chớp nháy liên tục (flapping/alert fatigue); thuật toán hysteresis giải quyết triệt để,Cơ chế trễ (Hysteresis) và đếm chuỗi liên tiếp (Streak) trong giám sát,Tạo khoảng cách giữa ngưỡng kích hoạt và ngưỡng phục hồi kèm điều kiện duy trì mẫu để loại bỏ các đỉnh tải tức thời,Tại sao không kích hoạt cảnh báo ngay khi CPU chạm ngưỡng 90% một lần duy nhất?,"Test log kịch bản streak biến thiên, biểu đồ trạng thái",TODO vì đây là checkpoint thiết kế; việc triển khai MVP bắt đầu theo kế hoạch sau khi contract được freeze.
LG-B-008,P0,W2,B,C,C,P0,Central.Incident,Storage,Incident persistence và unique active constraint,Lưu trữ sự cố vào CSDL với Filtered Unique Index bảo đảm chỉ tồn tại duy nhất 1 ticket active trên 1 IncidentKey; phân tách ConditionState và WorkflowState.,12,13,P0 Core,2.5,0.5,3.0,IncidentManager.cs,Filtered Unique Index: WHERE WorkflowState != 'RESOLVED'; ConditionState (ACTIVE/RECOVERED),"LG-B-002, LG-B-007",None,TEST-B08,Cố tình kích hoạt mở sự cố 2 lần liên tiếp trên cùng thiết bị và rule,Chỉ tạo đúng 1 dòng sự cố; lần kích hoạt sau chỉ cập nhật lịch sử và giữ nguyên ticket đang mở,Trùng lặp sự cố làm phân tán nhân lực xử lý; ràng buộc CSDL bảo đảm toàn vẹn dữ liệu ở mức cứng,Phân tách ConditionState vs WorkflowState và chỉ mục duy nhất có điều kiện,"ConditionState phản ánh tình trạng kỹ thuật thực tế của máy, WorkflowState phản ánh tiến trình xử lý của con người",Nếu sự cố tự phục hồi kỹ thuật trước khi kỹ thuật viên xác nhận thì trạng thái thế nào?,"Script định nghĩa Filtered Index, log test chống duplicate ticket",TODO vì đây là checkpoint thiết kế; việc triển khai MVP bắt đầu theo kế hoạch sau khi contract được freeze.
LG-B-009,P0,W3,B,C,C,P0,Central.Command,Storage,Commands ACK/START/RESOLVE + rowversion OCC,Xử lý các thao tác quản trị trên sự cố; kiểm tra tranh chấp dữ liệu bằng rowversion (OCC); khử trùng lặp qua ProcessedCommands (TTL 7d + SHA-256 digest).,15,16,P0 Core,2.5,0.5,3.0,IncidentCommandHandler.cs,"Optimistic Concurrency Control (OCC) via rowversion, Table ProcessedCommands",LG-B-008,LG-C-008,TEST-B09,Mô phỏng 2 Admin cùng gửi lệnh ACK trên cùng 1 sự cố tại cùng 1 mốc thời gian,"1 Admin cập nhật thành công, 1 Admin nhận mã lỗi xung đột 409 Conflict kèm dữ liệu mới nhất",Ghi đè mất dữ liệu (Lost Update); OCC bằng rowversion phát hiện ngay lập tức mà không cần lock bảng,Kiểm soát tương tranh lạc quan (OCC) bằng kiểu rowversion,"Đính kèm rowversion khi gửi lệnh cập nhật; câu lệnh SQL kiểm tra WHERE rowversion = @expected, nếu số dòng ảnh hưởng = 0 nghĩa là đã bị sửa đổi",Tại sao OCC phù hợp hơn Pessimistic Locking trong hệ thống giám sát nhiều người xem?,"Command handler log, test report xử lý tranh chấp 2 Admin",TODO vì đây là checkpoint thiết kế; việc triển khai MVP bắt đầu theo kế hoạch sau khi contract được freeze.
LG-B-010,P0,W3,B,A,A,P0,Central.Health,Testing,Restart/DB fault handling và Central health,Xây dựng cơ chế phát hiện và phục hồi kết nối CSDL khi SQL Server khởi động lại; quản lý trạng thái sức khỏe nội bộ của Central Server.,16,17,Test/Harness,3.0,0.5,3.5,HealthMonitor.cs & DbFaultRecovery.cs,"HEALTH_UPDATE (activeConnections, dbConnected, queueLag, uptime)",LG-B-005,None,TEST-B10,Tạm dừng dịch vụ SQL Server 10s trong lúc client đang kết nối; sau đó bật lại,Central Server tự động kết nối lại CSDL thành công; không bị crash tiến trình; khôi phục ghi dữ liệu bình thường,Ngoại lệ mất kết nối DB làm chết server mạng; bọc retry logic có giới hạn và thông báo trạng thái NotReady,Xử lý lỗi đứt gãy kết nối CSDL trong ứng dụng máy chủ thường trực,Dùng Connection Resiliency / Retry Policy; hàng đợi tạm thời lưu trữ tin nhắn trong RAM ngắn hạn chờ DB phục hồi,Nếu CSDL chết quá lâu thì xử lý hàng đợi RAM thế nào để không sập server?,"DB reconnect test trace, Health update broadcast log",TODO vì đây là checkpoint thiết kế; việc triển khai MVP bắt đầu theo kế hoạch sau khi contract được freeze.
LG-B-011,P0,W3,B,C,C,P0,Central.Retention,Storage,"Retention, query/report và restore plan",Job định kỳ dọn dẹp dữ liệu đo đạc chi tiết (raw metrics) cũ hơn 48 giờ theo trường ReceivedUtc; hiện thực API truy vấn lịch sử phân trang.,17,18,P0 Core,1.5,0.5,2.0,RetentionWorker.cs & QueryService.cs,"Purge query: ReceivedUtc < 48h ago, QUERY_INCIDENT_HISTORY, QUERY_METRICS_HISTORY",LG-B-002,LG-C-010,TEST-B11,Chèn dữ liệu giả lập 3 ngày trước; chạy job retention; kiểm tra số dòng còn lại,Xóa sạch dữ liệu thô quá 48h; giữ nguyên 100% dữ liệu trong 48h và toàn bộ lịch sử Incident,Lệnh DELETE lớn gây khóa bảng (Table Lock); xóa theo từng batch nhỏ 5000 dòng để không ảnh hưởng ghi mới,Chiến lược lưu trữ phân tầng và dọn dẹp dữ liệu (Data Retention),Dữ liệu thô phát sinh liên tục làm phình to CSDL nhanh chóng; cần dọn dẹp định kỳ và chỉ lưu trữ dài hạn sự cố tóm tắt,Tại sao xóa dữ liệu theo ReceivedUtc an toàn hơn theo sentAtUtc của client?,"Retention execution log, số lượng record trước và sau dọn dẹp",TODO vì đây là checkpoint thiết kế; việc triển khai MVP bắt đầu theo kế hoạch sau khi contract được freeze.
LG-B-012,P0,W3,B,C,C,P0,Central.Review,Integration,MVP concurrency và Incident acceptance,Kiểm tra toàn diện tính toàn vẹn dữ liệu khi chạy nhiều Agent và nhiều Admin đồng thời; thẩm định các tiêu chí cổng chất lượng M4.,18,19,Tích hợp,3.5,0.5,4.0,ConcurrencyAcceptanceReport.md,Hệ thống MVP tích hợp đầy đủ 3 khối,"LG-B-009, LG-B-010",LG-C-012,TEST-B12,Chạy kịch bản 33 test scenarios từ Master Plan; kiểm tra log lỗi CSDL và mạng,Không có lỗi nghiêm trọng Sev1/Sev2; số liệu hiển thị trên Admin nhất quán 100% với CSDL,Phát hiện lỗi race condition; cô lập module lỗi và sửa dứt điểm trước khi quyết định mở rộng P1,Đảm bảo tính nhất quán dữ liệu trong môi trường nhiều tác nhân đồng thời,"Kết hợp phân tầng: hàng đợi mạng tuần tự, transaction CSDL, kiểm tra khóa chính dedup và OCC trên đối tượng nghiệp vụ",Những rủi ro chính khi chuyển từ kiểm thử đơn luồng sang đa luồng?,"ConcurrencyAcceptanceReport.md, trace đối soát dữ liệu",TODO vì đây là checkpoint thiết kế; việc triển khai MVP bắt đầu theo kế hoạch sau khi contract được freeze.
LG-B-013,P1,W4,B,C,C,P1,P1.Internal,Networking,Internal Collector listener và dispatch,Mở cổng mạng nội bộ dành riêng cho Collector kết nối vào Central; xác thực node Collector và phân phối dữ liệu gom mẻ vào Ingest Channel.,22,24,P1 Extension,6.0,0.5,6.5,InternalCollectorDispatcher.cs,"COLLECTOR_REGISTER, COLLECTOR_FORWARD (multiplexed stream qua 1 socket)","M4 Gate GO, LG-B-012",LG-C-014,TEST-B13,Kết nối đồng thời 2 Collector vào Central; đẩy dữ liệu từ 20 agent qua Collector,Central nhận diện đúng danh tính từng Collector; giải mã và xử lý trơn tru luồng tin ghép,Collector giả mạo kết nối vào cổng nội bộ; xác thực token bí mật chia sẻ (Pre-shared Secret) khi bắt tay,Mô hình dồn luồng (Multiplexing) dữ liệu từ Collector về Central,"Nhiều Agent kết nối tới Collector, Collector gộp dữ liệu đẩy qua một kết nối socket duy nhất về Central để tối ưu tài nguyên",Làm thế nào Central định tuyến phản hồi ACK về đúng Agent ban đầu?,"Internal listener connection log, dispatch throughput counters",TODO vì đây là checkpoint thiết kế; việc triển khai MVP bắt đầu theo kế hoạch sau khi contract được freeze.
LG-B-014,P1,W4,B,C,C,P1,P1.Session,Architecture,Session generation qua Collector,Quản lý số thế hệ phiên (Session Generation) khi Agent chuyển vùng giữa các Collector để loại bỏ các bản tin đến muộn từ phiên cũ.,24,26,P1 Extension,5.0,0.5,5.5,SessionGenerationManager.cs,Header sessionGeneration (monotonically increasing integer per device),LG-B-013,None,TEST-B14,Mô phỏng gửi xen kẽ các bản tin thế hệ cũ (gen 1) sau khi đã thiết lập thế hệ mới (gen 2),Central tự động hủy bỏ các bản tin có thế hệ thấp hơn thế hệ hiện tại mà không gây xáo trộn trạng thái,Gói tin cũ bị trễ mạng đến sau làm sai lệch trạng thái mới (Out-of-order packets); session generation ngăn chặn triệt để,Kỹ thuật Session Generation / Fencing Token trong hệ thống mạng phân tán,Gán số thứ tự thế hệ tăng dần; mọi thao tác từ thế hệ cũ hơn đều bị từ chối để chống lỗi ghi đè dữ liệu quá hạn,Mối quan hệ giữa Session Generation và khóa khử trùng lặp Dedup Key?,"Session fencing log, test report loại bỏ bản tin cũ",TODO vì đây là checkpoint thiết kế; việc triển khai MVP bắt đầu theo kế hoạch sau khi contract được freeze.
LG-B-015,P1,W4,B,A,A,P1,P1.Recovery,RuleEngine,Collector loss recovery và offline suppression,Xử lý khi một Collector bị sập: tạm thời hoãn kích hoạt sự cố Offline hàng loạt cho các Agent đang kết nối qua Collector đó trong thời gian failover.,26,27,P1 Extension,5.0,0.5,5.5,CollectorFailoverHandler.cs,Grace period 45s cho các Agent thuộc node Collector vừa mất kết nối,LG-B-014,LG-A-015,TEST-B15,Ngắt kết nối Collector 01; quan sát danh sách sự cố trên Admin trong 45s đầu,Không kích hoạt bão cảnh báo Offline hàng loạt; chỉ báo trạng thái chuyển vùng; nếu quá 45s chưa kết nối lại mới báo Offline,Bão cảnh báo giả làm tê liệt đội ngũ hỗ trợ; trì hoãn thông minh (Suppression) giúp hệ thống ổn định,Kỹ thuật hoãn cảnh báo (Alert Suppression) khi xảy ra sự cố hạ tầng tập trung,"Khi một node trung chuyển gặp sự cố, nguyên nhân là ở hạ tầng mạng chứ không phải toàn bộ máy con bị hỏng; cần hoãn báo lỗi máy trạm",Làm thế nào phân biệt giữa 1 Collector chết và đứt cáp toàn bộ phòng máy?,"Collector loss trace log, suppression timeline capture",TODO vì đây là checkpoint thiết kế; việc triển khai MVP bắt đầu theo kế hoạch sau khi contract được freeze.
LG-B-016,P0,W4,B,A,A,P0/Stability,Central.Tuning,Testing,Tune SQL index và ingest budgets,Đo lường thời gian thực thi các truy vấn ghi telemetry; đánh chỉ mục phù hợp trên bảng Metrics và Incidents; tối ưu hóa kích thước batch.,26,27,Test/Harness,3.0,0.5,3.5,DbPerformanceAudit.md & OptimizedIndexes.sql,Ingest budget: latency < 50ms cho batch 50 records,LG-B-005,None,TEST-B16,"Đo đạc execution plan và thời gian insert liên tục 10,000 dòng telemetry",Thời gian ghi mẻ đạt p95 < 30ms; không xảy ra hiện tượng thiếu bộ đệm hay lock escalation,Chỉ mục quá nhiều làm chậm thao tác ghi; cân bằng giữa tốc độ ghi của Ingest và tốc độ đọc của Admin,Chiến lược tối ưu hóa chỉ mục CSDL cho hệ thống chuyên ghi (Write-heavy),Tránh đánh index trên các cột có độ biến thiên cao không cần thiết; dùng Clustered Index phù hợp và duy trì bảo trì chỉ mục,Tại sao khóa chính tự tăng (Identity) thường tối ưu cho bảng ghi liên tục hơn GUID ngẫu nhiên?,"SQL Server Execution Plan, báo cáo đo đạc hiệu năng",TODO vì đây là checkpoint thiết kế; việc triển khai MVP bắt đầu theo kế hoạch sau khi contract được freeze.
LG-B-017,P0,W4,B,C,C,P0/Stability,Central.Regression,Testing,Parser/auth/incident regression,"Chạy bộ kiểm thử hồi quy tự động kiểm tra toàn diện các module cốt lõi: FrameCodec, xác thực PBKDF2, luồng sự cố và API truy vấn.",27,28,Test/Harness,3.0,0.5,3.5,RegressionSuiteResults.md,Test suite tự động bao phủ các kịch bản quan trọng,"LG-B-009, LG-B-016",None,TEST-B17,Thực thi toàn bộ kịch bản kiểm thử tích hợp,100% kịch bản kiểm thử pass; không phát sinh lỗi hồi quy sau các chỉnh sửa hiệu năng,Sửa chức năng này làm hỏng chức năng khác; bộ test tự động phát hiện sớm sai sót,Tầm quan trọng của kiểm thử hồi quy (Regression Testing) trước khi đóng băng mã nguồn,Đảm bảo các thay đổi tối ưu mã hoặc sửa lỗi không vô tình phá vỡ các hợp đồng giao tiếp và tính toàn vẹn đã được kiểm chứng,Làm thế nào thiết kế kiểm thử để chạy độc lập không phụ thuộc vào thứ tự thực thi?,"Báo cáo kết quả kiểm thử hồi quy, test run console log",TODO vì đây là checkpoint thiết kế; việc triển khai MVP bắt đầu theo kế hoạch sau khi contract được freeze.
LG-B-018,P0,W5,B,A,A,P0/Release,Release.DbProof,Storage,DB restore và crash consistency proof,Thực hiện kịch bản sao lưu và phục hồi CSDL SQL Server sau sự cố giả lập sập nguồn đột ngột; chứng minh tính nhất quán dữ liệu phục hồi.,29,30,P0 Core,2.0,0.5,2.5,DbRestoreProof.md & Backup.bak,"SQL Server Full Backup & Restore, DBCC CHECKDB",LG-B-011,None,TEST-B18,Backup CSDL; kill tiến trình SQL khi đang ghi; restore từ bản backup và kiểm tra toàn vẹn,DBCC CHECKDB trả về 0 lỗi; dữ liệu sự cố và người dùng được phục hồi nguyên vẹn,File cơ sở dữ liệu bị hỏng vật lý; cấu hình chế độ ghi đồng bộ và kiểm tra trang lưu trữ,Cơ chế Write-Ahead Logging (WAL) và tính bền vững (Durability) trong CSDL,Mọi thay đổi phải được ghi vào Transaction Log trên đĩa trước khi ghi vào file dữ liệu chính để bảo đảm phục hồi khi mất điện,Sự khác biệt giữa sao lưu toàn phần (Full Backup) và sao lưu nhật ký giao dịch (Log Backup)?,"File backup CSDL .bak, output lệnh DBCC CHECKDB",TODO vì đây là checkpoint thiết kế; việc triển khai MVP bắt đầu theo kế hoạch sau khi contract được freeze.
LG-B-019,P0,W5,B,A,A,P0/Docs,Release.Audit,Integration,Audit tài liệu architecture/protocol/database,"Đối soát chéo tài liệu thiết kế hệ thống, sơ đồ CSDL, danh mục bản tin wire protocol và mã nguồn hiện thực; bảo đảm không còn sai lệch.",31,32,Tích hợp,2.5,0.0,2.5,AuditChecklist_B.md & Đồng bộ hồ sơ thiết kế,Toàn bộ tài liệu thiết kế và mã nguồn Central/CSDL,LG-B-018,LG-A-019,TEST-B19,"Rà soát từng bảng CSDL, từng trường DTO và so khớp với file CONTRACT_MATRIX.md","100% tên trường, kiểu dữ liệu và mô tả kỹ thuật thống nhất tuyệt đối giữa tài liệu và mã nguồn",Tài liệu không đồng bộ với code thực tế; cập nhật trực tiếp tài liệu theo đúng hiện trạng mã nguồn chuẩn,Tầm quan trọng của tính đồng bộ giữa tài liệu kiến trúc và mã nguồn,Tài liệu chuẩn xác giúp bảo trì hệ thống hiệu quả và là căn cứ pháp lý kỹ thuật khi nghiệm thu đồ án với hội đồng,Làm thế nào duy trì tính cập nhật của tài liệu khi dự án thay đổi liên tục?,"Bảng đối soát kiến trúc hoàn chỉnh, biên bản review",TODO vì đây là checkpoint thiết kế; việc triển khai MVP bắt đầu theo kế hoạch sau khi contract được freeze.
LG-B-020,P0,W5,B,C,C,P0/Viva,Viva,Viva,Viva B và bàn giao backup,"Diễn tập trả lời 30 câu hỏi vấn đáp chuyên sâu về Central Server, Async I/O, SQL Server, Transaction, PBKDF2 và OCC.",33,35,Viva,5.0,0.0,5.0,HANDBOOK_B.md & Viva rehearsal log,"30 câu hỏi viva chuyên sâu phần Server, Database & Rule Engine",LG-B-019,None,TEST-B20,Vấn đáp chéo giả định với thành viên A và C chấm điểm độc lập,"Giải thích xuất sắc các khái niệm giao dịch, khóa, bất đồng bộ và tự tin thao tác SQL trực tiếp",Nhầm lẫn giữa cơ chế khóa CSDL và khóa trong bộ nhớ; làm rõ ranh giới trong handbook,Tổng quan kiến trúc máy chủ xử lý dữ liệu tập trung của Lane B,"Trình bày toàn diện luồng nhận dữ liệu, xác thực an ninh, xử lý quy tắc sự cố và bảo toàn dữ liệu bằng CSDL quan hệ",Thử thách kỹ thuật lớn nhất gặp phải khi xây dựng Central Server?,"HANDBOOK_B.md, biên bản diễn tập vấn đáp nội bộ",TODO vì đây là checkpoint thiết kế; việc triển khai MVP bắt đầu theo kế hoạch sau khi contract được freeze.
LG-C-001,P0,W1,C,B,B,P0,Admin.UI,UI,WinForms UI shell wireframe và mock DTO,"Xây dựng khung giao diện chính WinForms nền sáng, menu điều hướng chuẩn cho Dashboard, Lab View, Incidents, Reports; chuẩn bị cấu trúc DTO.",1,3,P0 Core,2.5,0.5,3.0,MainForm.cs & NavigationFrame,"WinForms native controls, UI layout standards, Mock view models",LG-A-001,None,TEST-C01,"Chạy ứng dụng WinForms, kiểm tra điều hướng giữa các màn hình","Giao diện hiển thị rõ ràng, không vỡ layout khi co giãn cửa sổ, các menu chuyển đổi mượt mà",Giao diện bị giật (flickering); bật thuộc tính DoubleBuffered trên các UserControl,Thiết kế giao diện WinForms chuẩn mực và trải nghiệm người dùng,"Sử dụng tông màu sáng chuyên nghiệp, bố cục phân cấp rõ ràng và hỗ trợ đầy đủ phím tắt điều hướng",Tại sao đồ án lựa chọn công nghệ Windows Forms thay vì WPF hay Web?,"Ảnh chụp màn hình các form giao diện, file mã nguồn layout",TODO vì đây là checkpoint thiết kế; việc triển khai MVP bắt đầu theo kế hoạch sau khi contract được freeze.
LG-C-002,P0,W1,C,B,B,P0,Admin.Network,Networking,Admin TCP/TLS RPC client connection,Hiện thực kênh truyền TCP Client hai chiều kết nối tới Central Server bọc TLS; tích hợp FrameCodec dùng chung để gửi nhận bản tin.,3,4,P0 Core,3.0,0.5,3.5,AdminRpcClient.cs,"TcpClient, SslStream, FrameCodec, Duplex channel",LG-A-002,LG-B-003,TEST-C02,"Kết nối tới Central Server, gửi bản tin echo và kiểm tra nhận phản hồi",Bắt tay TLS thành công; duy trì kết nối duplex ổn định; tự động phát hiện khi kết nối đứt,Đứt cáp mạng không nhận được thông báo; gửi định kỳ heartbeat ping tầng ứng dụng để dò kênh truyền,Kênh truyền hai chiều (Duplex Connection) trên nền tảng Socket TCP,Một kết nối socket duy nhất được sử dụng đồng thời cho cả việc gửi request và nhận các event bất đồng bộ do server chủ động đẩy về,Làm thế nào phân biệt giữa bản tin phản hồi của Request và bản tin Event đẩy về?,"Network communication trace log, Wireshark dump",TODO vì đây là checkpoint thiết kế; việc triển khai MVP bắt đầu theo kế hoạch sau khi contract được freeze.
LG-C-003,P0,W1,C,B,B,P0,Admin.Auth,UI,Login/Signup WinForms UI & token storage client,"Màn hình đăng nhập, đăng ký bằng mã mời; lưu trữ session token an toàn trong bộ nhớ RAM client; xóa sạch token khi đăng xuất.",4,5,P0 Core,2.5,0.5,3.0,LoginForm.cs & SessionStorage.cs,"LOGIN (username, password), LOGIN_RESULT (token, role), Client RAM token store","LG-C-001, LG-C-002",LG-B-004,TEST-C03,Thực hiện đăng nhập thành công và đăng nhập sai mật khẩu; kiểm tra lưu token,"Đăng nhập đúng mở màn hình chính; đăng nhập sai báo lỗi thân thiện; token được giữ trong RAM, không lưu đĩa dạng plain text",Lưu mật khẩu plain text trên client; chỉ truyền mật khẩu qua TLS và không lưu mật khẩu vào bộ nhớ sau khi đăng nhập,Quản lý vòng đời phiên làm việc (Session Lifecycle) phía máy khách,Lưu session token trong bộ nhớ tạm (RAM) của ứng dụng; tự động hủy bỏ khi người dùng nhấn Logout hoặc tắt ứng dụng,Nguy cơ rò rỉ token nếu lưu trực tiếp vào file cấu hình trên đĩa cứng?,"Ảnh chụp màn hình form đăng nhập, code review session store",TODO vì đây là checkpoint thiết kế; việc triển khai MVP bắt đầu theo kế hoạch sau khi contract được freeze.
LG-C-004,P0,W1,C,B,B,P0,Admin.RPC,Testing,Khớp cặp Request/Response correlation và timeout,Quản lý tương quan request-response bất đồng bộ bằng TaskCompletionSource dựa trên trường requestId; thiết lập timeout 5s cho mọi yêu cầu RPC.,5,6,Test/Harness,3.0,0.5,3.5,RpcCorrelationManager.cs,"ConcurrentDictionary<Guid, TaskCompletionSource<WireEnvelope>>, timeout 5000ms",LG-C-002,None,TEST-C04,Gửi đồng thời 20 request qua kênh RPC tới mock server; kiểm tra khớp đúng kết quả,100% response trả về đúng luồng gọi tương ứng; tự động hủy và ném TimeoutException sau 5s nếu server không phản hồi,Rò rỉ bộ nhớ do các TaskCompletionSource không bao giờ hoàn thành; dùng Timer hoặc CancellationToken để tự dọn dẹp,Mô hình Request-Response trên kết nối Socket TCP hai chiều (RPC Correlation),Mỗi request được gán một requestId (UUID); client lưu TaskCompletionSource vào từ điển; khi nhận response sẽ lấy ra hoàn thành Task,Tại sao không thể dùng cơ chế tuần tự Read/Write đơn giản trên socket hai chiều?,"RPC correlation benchmark log, unit test suite",TODO vì đây là checkpoint thiết kế; việc triển khai MVP bắt đầu theo kế hoạch sau khi contract được freeze.
LG-C-005,P0,W2,C,B,B,P0,Admin.Cache,Storage,Bộ nhận Snapshot và khởi tạo cache Admin,"Nhận chuỗi bản tin SNAPSHOT_BEGIN, SNAPSHOT_PAGE, SNAPSHOT_END từ Central Server; nạp toàn bộ danh sách thiết bị và sự cố vào Local Cache.",8,10,P0 Core,2.5,0.5,3.0,SnapshotReceiver.cs & LocalCacheStore.cs,"SNAPSHOT_BEGIN, SNAPSHOT_PAGE, SNAPSHOT_END protocol flow",LG-C-004,LG-B-004,TEST-C05,Mô phỏng nhận snapshot 50 thiết bị chia làm 5 trang; kiểm tra dữ liệu trong cache,Nạp đủ 50 thiết bị vào cache; chỉ kích hoạt hiển thị dữ liệu sau khi nhận được bản tin SNAPSHOT_END,Hiển thị dữ liệu chắp vá khi đang nhận dở snapshot; cơ chế rào cản (Snapshot Barrier) ngăn chặn hiển thị trước khi hoàn tất,Cơ chế khởi tạo dữ liệu bằng Snapshot phân trang (Snapshot Barrier),Chia nhỏ dữ liệu lớn thành nhiều trang để không gây nghẽn kết nối mạng; khóa hiển thị cho tới khi nhận đủ toàn bộ các trang,Nếu một trang snapshot bị thất lạc trên đường truyền thì xử lý thế nào?,"Snapshot receipt timeline log, cache dump",TODO vì đây là checkpoint thiết kế; việc triển khai MVP bắt đầu theo kế hoạch sau khi contract được freeze.
LG-C-006,P0,W2,C,A,A,P0,Admin.Realtime,UI,"Admin cache merge, reconnect và UI-thread marshal",Hợp nhất các delta event thời gian thực vào Local Cache; điều phối cập nhật control WinForms an toàn đa luồng qua Control.Invoke / BeginInvoke / InvokeAsync.,10,11,P0 Core,3.0,0.5,3.5,CacheSynchronizer.cs & UiDispatcher.cs,"Control.Invoke, Control.BeginInvoke, Control.InvokeAsync, eventSeq ordering",LG-C-005,None,TEST-C06,Bơm liên tục 100 event cập nhật từ background thread mạng vào giao diện,Giao diện cập nhật mượt mà; 0 ngoại lệ InvalidOperationException (Cross-thread operation not valid),Truy cập trực tiếp control từ luồng mạng gây crash ứng dụng; kiểm tra InvokeRequired và chuyển về UI thread,Điều phối luồng trong Windows Forms (Thread Marshaling),Control trong WinForms gắn liền với UI thread (STA); mọi cập nhật giao diện từ luồng mạng phải được chuyển qua Invoke hoặc BeginInvoke,Sự khác biệt giữa Control.Invoke (đồng bộ) và Control.BeginInvoke (bất đồng bộ)?,"UI thread safety test log, code review dispatcher",TODO vì đây là checkpoint thiết kế; việc triển khai MVP bắt đầu theo kế hoạch sau khi contract được freeze.
LG-C-007,P0,W2,C,B,B,P0,Admin.Views,UI,"Dashboard, Lab View, Device Detail","Xây dựng màn hình tổng quan (Dashboard), chế độ xem lưới sơ đồ phòng máy (Lab View) với màu sắc trực quan kèm chữ/icon, và form chi tiết thiết bị.",11,12,P0 Core,3.0,0.5,3.5,"DashboardForm.cs, LabViewGridControl.cs, DeviceDetailDialog.cs","Grid layout phòng máy 20-40 máy trạm, trạng thái: Online (Xanh), Warning (Vàng), Offline (Xám)",LG-C-006,None,TEST-C07,Hiển thị 20 máy trạm; mô phỏng đổi trạng thái 1 máy sang Warning và 1 máy sang Offline,Màu sắc và icon cập nhật tức thì; không phụ thuộc duy nhất vào màu sắc (hỗ trợ người mù màu với nhãn trạng thái rõ ràng),"Người dùng không phân biệt được trạng thái do mù màu; kết hợp đồng thời màu nền, icon cảnh báo và văn bản trạng thái",Thiết kế giao diện hỗ trợ tiếp cận (Accessibility) trong phần mềm quản trị,Không chỉ dùng màu sắc đơn thuần để chỉ báo trạng thái; luôn đi kèm biểu tượng hình học và nhãn chữ để đảm bảo khả năng tiếp cận,Làm thế nào để hiển thị mượt mà khi phòng máy có hàng trăm máy trạm?,Ảnh chụp màn hình Lab View 20 máy trạm ở các trạng thái khác nhau,TODO vì đây là checkpoint thiết kế; việc triển khai MVP bắt đầu theo kế hoạch sau khi contract được freeze.
LG-C-008,P0,W3,C,B,B,P0,Admin.Incident,UI,Incident list/detail và action binding,"Giao diện danh sách sự cố và form chi tiết; gắn kết các nút hành động (ACK, START, RESOLVE) gửi lệnh kèm mã xác thực OCC expectedRowVersion.",15,16,P0 Core,3.0,0.5,3.5,IncidentListView.cs & IncidentActionPanel.cs,"INCIDENT_ACK, INCIDENT_START, INCIDENT_RESOLVE (incidentId, expectedRowVersion, commandId)",LG-C-006,LG-B-009,TEST-C08,Bấm nút tiếp nhận (ACK) và bắt đầu xử lý (START); đối soát command gửi trên mạng,Gửi đúng format command với expectedRowVersion hiện tại; vô hiệu hóa nút trong khi chờ phản hồi để tránh double click,Người dùng bấm đúp nút gửi 2 lệnh liên tiếp; vô hiệu hóa nút ngay khi bấm và sử dụng commandId duy nhất,Gắn kết thao tác người dùng với cơ chế chống tranh chấp OCC,Lấy rowversion hiện có của dòng sự cố đưa vào bản tin lệnh; nếu bản ghi đã bị người khác sửa đổi thì server sẽ báo lỗi tranh chấp,Tại sao client phải xử lý trường hợp nhận mã lỗi 409 Conflict từ máy chủ?,"Incident view screenshot, command request trace log",TODO vì đây là checkpoint thiết kế; việc triển khai MVP bắt đầu theo kế hoạch sau khi contract được freeze.
LG-C-009,P0,W3,C,B,B,P0,Admin.RBAC,UI,RBAC UI UX và session lifecycle client-side,"Điều chỉnh giao diện người dùng theo vai trò (Admin, Operator, Viewer): ẩn/hiện hoặc vô hiệu hóa nút bấm chức năng để tối ưu hóa trải nghiệm (UX optimization).",16,17,P0 Core,2.0,0.5,2.5,RbacUiManager.cs,"Role-based UI visibility: Viewer (chỉ xem), Operator (ACK, START, RESOLVE), Admin (toàn quyền kèm ASSIGN, User/Invite)","LG-C-003, LG-C-008",LG-B-004,TEST-C09,Đăng nhập lần lượt bằng 3 tài khoản với 3 vai trò khác nhau; kiểm tra hiển thị nút,Viewer không nhìn thấy các nút thay đổi trạng thái; Operator thấy nút ACK/START/RESOLVE; Admin thấy thêm nút ASSIGN và Invite/User Management,Người dùng nhầm lẫn quyền trên UI; ghi rõ vai trò hiện tại trên thanh trạng thái của ứng dụng,Phân định giữa UX Optimization trên Client và Server Authorization,Ẩn nút trên UI chỉ giúp người dùng không thao tác nhầm; việc xác thực quyền thực sự bắt buộc phải được thực thi tại Central Server,Nếu một người dùng sửa đổi client để gửi lệnh Resolve trái phép thì chuyện gì xảy ra?,Ảnh chụp giao diện của 3 vai trò người dùng khác nhau,TODO vì đây là checkpoint thiết kế; việc triển khai MVP bắt đầu theo kế hoạch sau khi contract được freeze.
LG-C-010,P0,W3,C,B,B,P0,Admin.Reports,UI,History/Report/Health views,"Màn hình tra cứu lịch sử sự cố theo khoảng thời gian, xem biểu đồ tài nguyên CPU/RAM trong 48h, xuất báo cáo CSV và xem sức khỏe máy chủ.",17,18,P0 Core,2.0,0.5,2.5,ReportViewerForm.cs & HealthViewDialog.cs,"QUERY_INCIDENT_HISTORY, QUERY_METRICS_HISTORY, CSV Export utility",LG-C-004,LG-B-011,TEST-C10,Thực hiện truy vấn sự cố 24h gần nhất và bấm xuất file CSV,Dữ liệu phân trang hiển thị đầy đủ; file CSV xuất ra mở được trên Excel với đúng bảng mã tiếng Việt UTF-8 BOM,"Xuất file CSV bị lỗi font chữ tiếng Việt; ghi kèm UTF-8 BOM byte (0xEF, 0xBB, 0xBF) ở đầu tệp",Kỹ thuật xuất báo cáo dữ liệu định dạng CSV hỗ trợ tiếng Việt,"Bổ sung UTF-8 BOM để các ứng dụng văn phòng tự động nhận diện đúng bảng mã Unicode, tránh lỗi vỡ ký tự",Tại sao cần phân trang dữ liệu khi hiển thị lịch sử đo đạc?,"File CSV báo cáo mẫu, ảnh chụp màn hình form báo cáo",TODO vì đây là checkpoint thiết kế; việc triển khai MVP bắt đầu theo kế hoạch sau khi contract được freeze.
LG-C-011,P0,W3,C,A,A,P0,Admin.Integration,Integration,MVP UI integration và accessibility,"Tích hợp toàn bộ các form giao diện vào luồng vận hành thống nhất; kiểm tra thứ tự phím Tab (TabIndex), phím tắt Alt và độ tương phản hiển thị.",18,19,Tích hợp,3.5,0.5,4.0,UiIntegrationReport.md,Toàn bộ giao diện người dùng WinForms MVP,"LG-C-007, LG-C-010","LG-A-012, LG-B-012",TEST-C11,"Điều hướng toàn bộ ứng dụng chỉ bằng bàn phím (Tab, Enter, Escape, phím mũi tên)",Thứ tự TabIndex tuần tự hợp lý; không có trường dữ liệu nào bị kẹt phím; các nút chính có phím nóng,Con trỏ nhảy lộn xộn khi bấm Tab; chuẩn hóa lại thuộc tính TabIndex trên từng control trong form designer,Tiêu chuẩn điều hướng bàn phím trong ứng dụng Desktop chuyên nghiệp,Giúp người vận hành thao tác nhanh chóng trong phòng máy mà không cần phụ thuộc hoàn toàn vào chuột,Làm thế nào để xử lý các phím tắt toàn cục trong WinForms?,"Checklist kiểm tra TabIndex và phím tắt, ảnh chụp giao diện",TODO vì đây là checkpoint thiết kế; việc triển khai MVP bắt đầu theo kế hoạch sau khi contract được freeze.
LG-C-012,P0,W3,C,B,B,P0/Gate,Admin.Gate,Integration,MVP review và P1 GO/DEFER gate,Chủ trì cuộc họp nhóm đánh giá chất lượng phiên bản MVP; kiểm tra các tiêu chí cổng Gate M4 và lập biên bản chính thức quyết định GO hoặc DEFER P1.,19,20,Tích hợp,2.5,0.5,3.0,M4_Gate_Review.md,Tiêu chí nghiệm thu cổng chất lượng M4,LG-C-011,"LG-A-012, LG-B-012",TEST-C12,Đối chiếu tình trạng thực tế của MVP với checklist M4 Gate,0 lỗi Sev1/Sev2; cả 3 ứng dụng P0 chạy ổn định trên mạng LAN thật; có biên bản ký nhận thống nhất của cả 3 thành viên,Còn lỗi Sev1 chưa giải quyết; tự động kích hoạt DEFER P1 để dành toàn bộ thời gian tuần 4 ổn định core,Quy trình quản lý chất lượng phần mềm và cổng quyết định (Stage-Gate),Thiết lập các mốc kiểm soát rõ ràng; chỉ mở rộng tính năng mới khi nền tảng cốt lõi đã đạt độ tin cậy tuyệt đối,Các tiêu chí then chốt để phân loại mức độ nghiêm trọng của lỗi (Sev1 so với Sev2)?,M4_Gate_Review.md có chữ ký xác nhận của 3 thành viên,TODO vì đây là checkpoint thiết kế; việc triển khai MVP bắt đầu theo kế hoạch sau khi contract được freeze.
LG-C-013,P1,W4,C,A,A,P1,P1.Collector,Networking,Collector Agent-facing host (binary dùng chung),Xây dựng ứng dụng LabGuard.Collector.exe (một binary duy nhất dùng chung cho cả 2 instance); lắng nghe kết nối TCP từ Agent và phân khung dữ liệu.,22,24,P1 Extension,6.0,0.5,6.5,LabGuard.Collector.exe & AgentListener.cs,"Collector TCP server socket, MaxConcurrentConnections = 100","M4 Gate GO, LG-C-012",LG-A-013,TEST-C13,Khởi chạy ứng dụng Collector trên máy trạm; cho Agent kết nối thử nghiệm,"Chấp nhận kết nối từ Agent, đọc và phân khung FrameCodec đúng chuẩn giao thức",Quá tải số lượng kết nối; từ chối bớt kết nối khi vượt ngưỡng và báo NotReady về Gateway,Kiến trúc ứng dụng Collector dùng chung cho nhiều phiên bản triển khai,"Một file thực thi duy nhất nhận tham số cấu hình (Port, UpstreamHost, NodeId) qua command line hoặc appsettings để chạy thành nhiều instance độc lập",Tại sao không cần biên dịch 2 file mã nguồn riêng biệt cho 2 Collector?,"Collector startup console log, cấu hình appsettings mẫu",TODO vì đây là checkpoint thiết kế; việc triển khai MVP bắt đầu theo kế hoạch sau khi contract được freeze.
LG-C-014,P1,W4,C,B,B,P1,P1.Collector,Networking,Collector upstream multiplex và reply router,Gộp luồng dữ liệu từ nhiều Agent và chuyển tiếp lên Central Server qua một kết nối socket upstream duy nhất; định tuyến ACK trả về đúng Agent.,24,26,P1 Extension,6.0,0.5,6.5,UpstreamMultiplexer.cs & ReplyRouter.cs,"Single upstream TCP socket to Central, routing table clientConnectionId <-> socket",LG-C-013,LG-B-013,TEST-C14,Kết nối 10 Agent vào Collector; kiểm tra luồng tin gửi về Central và ACK trả ngược lại,Dữ liệu được dồn kênh chính xác; 10 Agent nhận đúng bản tin ACK tương ứng mà không bị nhầm lẫn,Một Agent bị đứt kết nối trong khi ACK đang trên đường về; kiểm tra socket còn sống trước khi ghi trả ACK,Kỹ thuật dồn luồng và bảng định tuyến phản hồi trong Proxy trung chuyển,Gắn nhãn định danh kết nối (ConnectionId) vào gói tin gửi upstream; khi nhận ACK sẽ tra bảng định tuyến để trả lời đúng socket client,Làm thế nào tránh rò rỉ bộ nhớ trong bảng định tuyến kết nối?,"Multiplexing trace log, bảng định tuyến router",TODO vì đây là checkpoint thiết kế; việc triển khai MVP bắt đầu theo kế hoạch sau khi contract được freeze.
LG-C-015,P1,W4,C,A,A,P1,P1.Collector,Networking,Collector readiness/health và bounded buffers,Cung cấp cổng thăm dò sức khỏe sẵn sàng phục vụ cho Gateway; áp dụng hàng đợi bộ đệm có chặn để bảo vệ bộ nhớ khi upstream gặp tắc nghẽn.,26,27,P1 Extension,4.0,0.5,4.5,CollectorHealthService.cs & BoundedForwardBuffer.cs,"TCP Health Port cho Gateway probe, Bounded Channel buffer",LG-C-014,LG-A-014,TEST-C15,Mô phỏng ngắt kết nối upstream tới Central; kiểm tra phản ứng của buffer và health probe,Hàng đợi buffer không vượt ngưỡng dung lượng; cổng health báo NotReady tới Gateway để tạm dừng tiếp nhận,Nghẽn mạng upstream làm tràn RAM máy chủ trung chuyển; kích hoạt backpressure làm chậm tốc độ đọc từ Agent,Cơ chế kiểm tra độ sẵn sàng (Readiness Probe) và điều tiết áp lực ngược (Backpressure),Chỉ nhận tải khi downstream và upstream đều sẵn sàng; tự động kích hoạt hàng rào bảo vệ khi bộ đệm đạt ngưỡng giới hạn,Tại sao Readiness Probe khác với Liveness Probe?,"Collector health status log, buffer memory usage graph",TODO vì đây là checkpoint thiết kế; việc triển khai MVP bắt đầu theo kế hoạch sau khi contract được freeze.
LG-C-016,P0,W4,C,B,B,P0/Stability,Admin.Testing,Testing,Multi-admin concurrency và race condition tests,Thiết lập kịch bản kiểm thử 2 ứng dụng WinForms của 2 Admin cùng mở 1 sự cố và cùng thực hiện thao tác tiếp nhận/giải quyết đồng thời.,27,28,Test/Harness,3.0,0.5,3.5,MultiAdminTestReport.md,"2 WinForms Admin clients, cùng thao tác trên 1 Ticket sự cố",LG-C-008,LG-B-009,TEST-C16,2 người cùng bấm nút Resolve trong cùng 1 giây,Người bấm trước thành công; người bấm sau nhận hộp thoại thông báo xung đột dữ liệu thân thiện và màn hình tự làm mới,Ứng dụng bị crash hoặc hiện mã lỗi thô; hiển thị thông báo nghiệp vụ rõ ràng hướng dẫn người dùng làm mới dữ liệu,Trải nghiệm người dùng khi xảy ra xung đột tương tranh dữ liệu,"Bắt mã lỗi xung đột OCC từ server và hiển thị hộp thoại thông báo dễ hiểu, tự động tải lại dữ liệu mới nhất cho người dùng",Làm thế nào để thông báo cho Admin thứ hai biết ngay khi Admin thứ nhất vừa thao tác?,"MultiAdminTestReport.md, video ghi lại thao tác xung đột",TODO vì đây là checkpoint thiết kế; việc triển khai MVP bắt đầu theo kế hoạch sau khi contract được freeze.
LG-C-017,P0,W5,C,A,A,P0/Release,Release.UiRegression,Testing,UI release regression và settings cleanup,"Kiểm thử hồi quy giao diện trên các tỷ lệ co giãn màn hình khác nhau (DPI 100%, 125%, 150%); dọn dẹp các thiết lập gỡ lỗi tạm.",29,30,Test/Harness,3.0,0.5,3.5,UiRegressionChecklist.md,High-DPI Per-Monitor V2 support trong WinForms,LG-C-011,None,TEST-C17,"Chạy WinForms trên màn hình Full HD ở các mức scale 100%, 125% và 150%","Giao diện không bị mờ nhạt (blurry), chữ không bị cắt cụt, các icon tự co giãn sắc nét",Lỗi co giãn DPI làm vỡ form giao diện; bật cấu hình HighDpiMode = SystemAware hoặc PerMonitorV2 trong Program.cs,Hỗ trợ màn hình độ phân giải cao (High DPI Scaling) trong WinForms,Cấu hình ứng dụng nhận biết DPI để hệ điều hành không tự động kéo dãn pixel làm mờ giao diện; thiết kế layout co giãn linh hoạt,Các thuộc tính Anchor và Dock trong WinForms hỗ trợ co giãn màn hình ra sao?,Ảnh chụp màn hình đối chiếu ở 3 tỷ lệ DPI khác nhau,TODO vì đây là checkpoint thiết kế; việc triển khai MVP bắt đầu theo kế hoạch sau khi contract được freeze.
LG-C-018,P0,W5,C,A,A,P0/Demo,Release.Demo,UI,Demo rehearsal và backup assets,Xây dựng kịch bản trình chiếu demo 15 phút bao quát mọi tình huống nghiệp vụ; quay video demo dự phòng chất lượng cao đề phòng rủi ro mạng.,31,32,P0 Core,1.0,0.5,1.5,DemoScript.md & DemoBackup.mp4,Kịch bản demo chuẩn gồm 6 bước nghiệp vụ xuyên suốt,LG-C-017,LG-A-018,TEST-C18,Chạy thử toàn bộ kịch bản demo theo đúng thời lượng quy định với 3 máy thật,"Kịch bản demo trơn tru, làm nổi bật đầy đủ các yêu cầu môn học NT106; có video backup sẵn sàng",Mạng phòng thi gặp sự cố trong buổi báo cáo; lập tức chuyển sang video backup chất lượng cao để trình bày không bị gián đoạn,Kỹ năng lập kế hoạch demo và quản trị rủi ro khi báo cáo sản phẩm,"Luôn chuẩn bị phương án dự phòng (video demo, dữ liệu mẫu, cấu hình offline) để đối phó với sự cố môi trường ngoài dự kiến",Làm thế nào minh chứng video demo được quay từ sản phẩm thật của nhóm?,"DemoScript.md, video demo backup chất lượng 1080p",TODO vì đây là checkpoint thiết kế; việc triển khai MVP bắt đầu theo kế hoạch sau khi contract được freeze.
LG-C-019,P0,W5,C,B,B,P0/Release,Release.Docs,System,Release review checklist và README,"Biên soạn tài liệu README hướng dẫn cài đặt, vận hành hệ thống từ đầu; rà soát toàn bộ checklist nộp bài đồ án môn học NT106.",32,33,P0 Core,1.0,0.0,1.0,README.md & RELEASE_CHECKLIST.md,"Tài liệu hướng dẫn cài đặt chuẩn, yêu cầu môi trường .NET 9",LG-C-018,"LG-A-019, LG-B-019",TEST-C19,Người ngoài nhóm làm theo hướng dẫn trong README để cài đặt và chạy thử,"Cài đặt thành công trên máy tính mới trong vòng 10 phút; tài liệu rõ ràng, dễ hiểu",Thiếu các bước cấu hình kết nối CSDL hoặc chứng chỉ; bổ sung chi tiết từng bước có ảnh chụp minh họa,Chuẩn hóa tài liệu chuyển giao và hướng dẫn triển khai sản phẩm,Tài liệu rõ ràng giúp người chấm bài hoặc kỹ sư tiếp quản có thể dễ dàng dựng môi trường và kiểm chứng tính đúng đắn,Cần cung cấp những thông tin tối thiểu nào trong tài liệu hướng dẫn kỹ thuật?,"README.md, RELEASE_CHECKLIST.md",TODO vì đây là checkpoint thiết kế; việc triển khai MVP bắt đầu theo kế hoạch sau khi contract được freeze.
LG-C-020,P0,W5,C,B,B,P0/Viva,Viva,Viva,Viva C và bàn giao backup,"Diễn tập trả lời 30 câu hỏi vấn đáp chuyên sâu về WinForms STA Thread, Control.Invoke/BeginInvoke, Local Cache và Collector App.",33,35,Viva,5.0,0.0,5.0,HANDBOOK_C.md & Viva rehearsal log,"30 câu hỏi viva chuyên sâu phần WinForms, Cache & Collector App",LG-C-019,None,TEST-C20,Vấn đáp chéo giả định với thành viên A và B chấm điểm độc lập,"Giải thích thành thạo các cơ chế UI thread, RPC correlation, snapshot cache và kiến trúc Collector",Nhầm lẫn giữa luồng giao diện và luồng mạng; ôn tập kỹ sơ đồ marshaling trong handbook,Tổng quan kiến trúc ứng dụng quản trị và điều phối giao diện của Lane C,"Trình bày rõ ràng cấu trúc ứng dụng WinForms, cơ chế nhận snapshot và delta event để duy trì tính nhất quán thời gian thực",Bài học quan trọng nhất về việc thiết kế giao diện cho hệ thống giám sát sự cố?,"HANDBOOK_C.md, biên bản diễn tập vấn đáp nội bộ",TODO vì đây là checkpoint thiết kế; việc triển khai MVP bắt đầu theo kế hoạch sau khi contract được freeze.
